# CPROY_V1.0_2015

Schedule from MS Project, 2015-09-14 to 2016-08-08, A marks actual dates.

## Calendars

- Calendario UTP: Mon-Sat 09:00-13:00, 15:00-19:00; Sun off. Exceptions (off unless hours are given): 2015-10-08 (Combate de Angamos), 2015-11-01 (Dia de los Muertos).

## Resources

| Resource |
| --- |
| BENITES |
| PONCE |
| SINCHE |
| SAENZ |

## Schedule

| ID | WBS | Task | Type | Duration | Start | Finish | Predecessors | Complete | Remaining | Actual start | Total slack | Free slack | Constraint | Resources | Work | Actual work |
| --- | --- | --- | --- | --- | --- | --- | --- | --- | --- | --- | --- | --- | --- | --- | --- | --- |
| 1 | 1 | **Proyecto SISREV** |  | 85d | 2016-05-02 | 2016-08-08 |  | 3% | 82.52d | 2015-09-14 |  |  |  | BENITES; PONCE; SAENZ; SINCHE | 22395.6h | 7746h |
| 2 | 1.1 | **Proceso de Gestión** |  | 85d | 2016-05-02 | 2016-08-08 |  | 8% | 78.37d | 2015-09-30 |  |  |  | BENITES; PONCE; SINCHE; SAENZ | 9406.64h | 3436h |
| 3 | 1.1.1 | **Inicio** |  | 52d | 2016-05-02 A | 2016-06-30 |  | 99% | 0d |  |  |  |  | BENITES; PONCE; SINCHE | 1461h | 429h |
| 4 | 1.1.1.1 | Revisión de la Metodología de Trabajo |  | 8.88d | 2016-05-02 A | 2016-05-11 A |  | 100% |  |  |  |  | finish no earlier than 2015-11-19 | BENITES; PONCE; SINCHE | 213h | 213h |
| 5 | 1.1.2 | **Planificación** |  | 44d | 2016-05-11 | 2016-06-30 |  |  | 44d | 2016-05-04 |  |  |  | BENITES; PONCE; SAENZ; SINCHE | 3153.64h | 487h |
| 6 | 1.1.2.1 | **Plan del Proyecto** |  | 11d | 2016-05-11 | 2016-05-23 | 3 |  | 11d | 2016-05-04 |  |  |  | BENITES; PONCE; SINCHE | 1745.64h | 263h |
| 7 | 1.1.2.1.1 | **Elaboración de Plan de Proyecto** |  | 18d | 2016-05-11 A | 2016-05-31 |  |  | 18d |  |  |  |  | BENITES; PONCE; SINCHE | 1394h |  |
| 8 | 1.1.2.1.1.1 | Definir Nombre del Proyecto |  | 1d | 2016-05-11 | 2016-05-11 |  |  |  |  | 16.88d |  |  | BENITES; PONCE; SINCHE | 24h |  |
| 9 | 1.1.2.1.1.2 | Definir Objetivos de Proyecto |  | 1d | 2016-05-11 | 2016-05-11 |  |  |  |  | 16.88d |  |  | BENITES; PONCE; SINCHE | 24h |  |
| 10 | 1.1.2.1.1.3 | Elaboración de Cronograma Detallado | manual | 7d | 2016-05-11 A | 2016-05-18 |  |  | 7d |  |  |  |  | SINCHE; BENITES; PONCE | 168h |  |
| 11 | 1.1.2.1.1.4 | Gestión de Comunicaciones |  | 10.88d | 2016-05-11 | 2016-05-23 |  |  |  |  | 66d |  | finish no earlier than 2016-05-23 | SINCHE; PONCE; BENITES | 261h |  |
| 12 | 1.1.2.1.1.5 | Necesidades del Proyecto | manual | 7d | 2016-05-11 A | 2016-05-18 |  |  | 7d |  |  |  |  | SINCHE; PONCE; BENITES | 168h |  |
| 13 | 1.1.2.1.1.6 | Identificación de Riesgos del Proyecto | manual | 7d | 2016-05-11 A | 2016-05-18 |  |  | 7d |  |  |  |  | SINCHE | 56h |  |
| 14 | 1.1.2.1.1.7 | Elaborar Documento de Riesgos del Proyecto |  | 3.88d | 2016-05-11 | 2016-05-14 |  |  |  |  | 66d | 0d | start no earlier than 2016-05-11 | SINCHE | 31h |  |
| 15 | 1.1.2.1.1.8 | Elaborar Documento Plan de Proyecto |  | 10.88d | 2016-05-11 | 2016-05-23 |  |  |  |  | 66d |  | start no earlier than 2016-05-11 | SINCHE; BENITES | 174h |  |
| 16 | 1.1.2.1.1.9 | Traspaso de Información |  | 7d | 2016-05-14 | 2016-05-23 | 14 |  |  |  | 66d |  | finish no earlier than 2016-05-23 | BENITES | 56h |  |
| 17 | 1.1.2.1.2 | **Revisión Interna del Plan de Proyecto** |  | 2d | 2016-05-11 | 2016-05-12 |  |  |  |  |  |  |  |  | 44.64h |  |
| 18 | 1.1.2.1.2.1 | Revisión de Plan de Proyecto por el equipo del Proyecto |  | 0.88d | 2016-05-18 | 2016-05-18 |  |  |  |  | -6.88d | 0d | start no earlier than 2016-05-18 | BENITES; PONCE; SINCHE | 21h |  |
| 19 | 1.1.2.1.2.2 | Ajustes al Plan de Proyecto |  | 0.88d | 2016-05-18 | 2016-05-19 | 18 |  |  |  | -6.88d | 0d | finish no earlier than 2015-09-19 | BENITES; PONCE; SINCHE | 7.64h |  |
| 20 | 1.1.2.1.2.3 | Elaborar Acta de REVISION INTERNA del PLAN DE PROYECTO |  | 1d | 2016-05-19 | 2016-05-20 | 19 |  |  |  | -6.88d | 0d |  | SINCHE | 8h |  |
| 21 | 1.1.2.1.2.4 | Traspaso de Información |  | 1d | 2016-05-20 | 2016-05-21 | 20 |  |  |  | 67.12d |  | start no earlier than 2015-09-21 | BENITES | 8h |  |
| 22 | 1.1.2.1.3 | **Gestión de la Configuración** |  | 2d | 2016-05-11 | 2016-05-12 |  |  | 2d | 2016-05-04 |  |  |  | BENITES | 44h |  |
| 23 | 1.1.2.1.3.1 | Establecer Repositorio de Datos | manual | 2d | 2016-05-04 A | 2016-05-05 |  |  | 2d |  |  |  | start no earlier than 2016-05-04 | BENITES | 16h |  |
| 24 | 1.1.2.1.3.2 | Asignar Gestor de Configuración |  | 0.5d | 2016-05-05 | 2016-05-06 | 23 |  |  |  | 80.5d |  | start no earlier than 2015-09-08 | SINCHE | 4h |  |
| 25 | 1.1.2.1.3.3 | Elaborar Solicitud de Accesos |  | 1d | 2016-05-04 | 2016-05-04 |  |  |  |  | 81.88d |  | start no earlier than 2016-05-04 | BENITES | 8h |  |

Notes:
- 8: UTP-GPS-ALARM
- 9: Inciso 4 de Plan de Proyecto
- 11: 9.2.4 de Plan de Proyecto
- 12: 6 de Plan de Proyecto
- 13: 9.1 de Plan de Proyecto
- 14: REGRI_V1.0_2015.xlsx
- 15: PPROY_V1.0_2015

| ID | WBS | Task | Duration | Start | Finish | Predecessors | Remaining | Actual start | Total slack | Free slack | Constraint | Resources | Work | Actual work |
| --- | --- | --- | --- | --- | --- | --- | --- | --- | --- | --- | --- | --- | --- | --- |
| 26 | 1.1.3 | **Asignación, Ejecución, Seguimiento y Control** | 57d | 2016-05-02 | 2016-07-06 |  | 57d | 2015-09-30 |  |  |  | BENITES; PONCE; SINCHE | 2011h | 347h |
| 27 | 1.1.3.1 | **Desarrollo del Área de Proceso PP- PMC** | 6d | 2016-05-02 A | 2016-05-07 |  | 6d |  | 50.88d |  |  | BENITES; SINCHE | 184h | 96h |
| 28 | 1.1.3.1.1 | Elaborar Plantilla de Reunión Externa Mensual | 1d | 2016-05-02 | 2016-05-02 |  |  |  | 52.88d | 0d |  | SINCHE | 8h |  |
| 29 | 1.1.3.1.2 | Elaborar Plantilla de Gestion de Riesgos | 1d | 2016-05-03 | 2016-05-03 | 28 |  |  | 52.88d | 0d |  | SINCHE | 8h |  |
| 30 | 1.1.3.1.3 | Elaborar Plantilla de Informe de Avances Quincenales | 1d | 2016-05-04 | 2016-05-04 | 29 |  |  | 52.88d | 0d |  | SINCHE | 8h |  |
| 31 | 1.1.3.1.4 | Elaborar Plantillas de Actas de Reunión Interna Quincenal | 1d | 2016-05-05 | 2016-05-05 | 30 |  |  | 52.88d |  |  | SINCHE | 8h |  |
| 32 | 1.1.3.1.5 | Elaborar Formato de Aceptación de Entregables | 1d | 2016-05-02 | 2016-05-02 |  |  |  | 50.88d | 0d |  | SINCHE | 8h |  |
| 33 | 1.1.3.1.6 | Elaborar Documento Gestión de Procesos PP-PMC | 5d | 2016-05-03 | 2016-05-07 | 32 |  |  | 50.88d |  |  | SINCHE | 40h |  |
| 34 | 1.1.3.1.7 | Traspaso de Información | 1d | 2016-05-02 | 2016-05-02 |  |  |  | 55.88d |  | start no earlier than 2015-09-21 | BENITES | 8h |  |
| 35 | 1.1.3.2 | **Desarrollo del Área de Proceso REQM** | 4d | 2015-09-30 A | 2015-10-03 |  | 4d |  |  |  |  | BENITES; SINCHE | 112h | 64h |
| 36 | 1.1.3.2.1 | Elaborar Formato de Solicitud a Cambios a Requerimientos | 1d | 2015-09-30 | 2015-09-30 |  |  |  | 2.88d |  |  | SINCHE | 8h |  |
| 37 | 1.1.3.2.2 | Elaborar Formato de Matriz de Trazabilidad de Requerimientos | 1d | 2015-09-30 | 2015-09-30 |  |  |  | 2.88d |  |  | SINCHE | 8h |  |
| 38 | 1.1.3.2.3 | Elaborar Formato de Registro de Cambios a Requerimientos | 1d | 2015-09-30 | 2015-09-30 |  |  |  | 2.88d |  |  | SINCHE | 8h |  |
| 39 | 1.1.3.2.4 | Elaborar Documento de Proceso de Gestión de cambios de Requerimientos | 2d | 2015-09-30 | 2015-10-01 |  |  |  | 1.88d |  |  | SINCHE | 16h |  |
| 40 | 1.1.3.2.5 | Traspaso de Información | 1d | 2015-09-30 | 2015-09-30 |  |  |  | 2.88d |  |  | BENITES | 8h |  |
| 41 | 1.1.3.3 | **Desarrollo del Área de Proceso PPQA** | 4d | 2015-10-07 A | 2015-10-12 |  | 4d |  |  |  |  | BENITES; PONCE | 128h | 64h |
| 42 | 1.1.3.3.1 | Elaborar Formato de CheckList de Aseguramiento de la Calidad | 1d | 2015-10-07 | 2015-10-07 |  |  |  | -4.12d | 0d |  | PONCE | 8h |  |
| 43 | 1.1.3.3.2 | Elaborar Herramienta de Gestión de Aseguramiento de la Calidad | 1d | 2015-10-09 | 2015-10-09 | 42 |  |  | -4.12d | 0d |  | PONCE | 8h |  |
| 44 | 1.1.3.3.3 | Elaborar Plantilla de Informe General de QA | 1d | 2015-10-10 | 2015-10-10 | 43 |  |  | -4.12d | 0d |  | PONCE | 8h |  |
| 45 | 1.1.3.3.4 | Elaborar Formato de Solicitud de Control de Calidad del Producto | 1d | 2015-10-12 | 2015-10-12 | 44 |  |  | -4.12d | 0d |  | PONCE | 8h |  |
| 46 | 1.1.3.3.5 | Elaborar documento de Proceso de Aseguramiento de la calidad | 3d | 2015-10-13 | 2015-10-15 | 45 |  |  | -4.12d | 0d |  | PONCE | 24h |  |
| 47 | 1.1.3.3.6 | Traspaso de Información | 1d | 2015-10-16 | 2015-10-16 | 46 |  |  | -4.12d | 0d |  | BENITES | 8h |  |
| 48 | 1.1.3.4 | **Desarrollo del Área de Proceso MA** | 4d | 2015-10-14 A | 2015-10-17 |  | 4d |  |  |  |  | BENITES; PONCE; SINCHE | 163h | 99h |
| 49 | 1.1.3.4.1 | Elaborar Formato de Ficha de Métricas de Numero de N Conformidades de Producto | 1d | 2015-10-14 | 2015-10-14 |  |  |  | 1.88d | 0d |  | SINCHE | 8h |  |
| 50 | 1.1.3.4.2 | Elaborar Formato de Ficha de Métricas de Índice de Cambios de Ítems de Configuración | 1d | 2015-10-15 | 2015-10-15 | 49 |  |  | 1.88d |  |  | SINCHE | 8h |  |
| 51 | 1.1.3.4.3 | Elaborar Formato de Ficha de Métricas de Volatilidad de Requerimientos | 1d | 2015-10-17 | 2015-10-17 |  |  |  | -5.12d | 0d | start no earlier than 2015-10-17 | SINCHE | 8h |  |
| 52 | 1.1.3.4.4 | Elaborar Formato de Ficha de Métricas de Exposición al Riesgo | 1d | 2015-10-19 | 2015-10-19 | 51 |  |  | -5.12d | 0d |  | SINCHE | 8h |  |
| 53 | 1.1.3.4.5 | Elaborar Formato de Tablero de Métricas | 1d | 2015-10-20 | 2015-10-20 | 52 |  |  | -5.12d | 0d |  | SINCHE | 8h |  |
| 54 | 1.1.3.4.6 | Elaborar Documento de Proceso de Medicion de Métricas | 2d | 2015-10-21 | 2015-10-22 | 53 |  |  | -5.12d | 0d |  | SINCHE | 16h |  |
| 55 | 1.1.3.4.7 | Traspaso de Información | 1d | 2015-10-23 | 2015-10-23 | 54 |  |  | -5.12d | 0d |  | BENITES | 8h |  |

Notes:
- 33: PPT

| ID | WBS | Task | Duration | Start | Finish | Predecessors | Remaining | Actual start | Total slack | Free slack | Constraint | Resources | Work | Actual work |
| --- | --- | --- | --- | --- | --- | --- | --- | --- | --- | --- | --- | --- | --- | --- |
| 56 | 1.1.3.5 | **Desarrollo del Área de Proceso CM** | 3d | 2015-10-14 A | 2015-10-16 |  | 3d |  |  |  |  | BENITES | 56h | 24h |
| 57 | 1.1.3.5.1 | Elaborar Formato de Registro de Ítems de Configuración | 1d | 2015-10-14 | 2015-10-14 |  |  |  | 1.88d |  |  | BENITES | 8h |  |
| 58 | 1.1.3.5.2 | Elaborar Formato de Solicitud de Accesos | 1d | 2015-10-14 | 2015-10-14 |  |  |  | 1.88d |  |  | BENITES | 8h |  |
| 59 | 1.1.3.5.3 | Elaborar Documento de Proceso de Gestión de Configuración | 1d | 2015-10-14 | 2015-10-14 |  |  |  | 0.88d | 0d |  | BENITES | 8h |  |
| 60 | 1.1.3.5.4 | Traspaso de Información | 1d | 2015-10-15 | 2015-10-15 | 59 |  |  | 0.88d |  |  | BENITES | 8h |  |
| 61 | 1.1.4 | **Cierre** | 2d | 2016-05-02 A | 2016-05-03 |  | 2d |  |  |  |  | BENITES; PONCE; SAENZ; SINCHE | 64h |  |
| 62 | 1.1.4.1 | **Cierre de Proyecto** | 1d? | 2015-11-18 | 2015-11-18 |  |  |  |  |  |  |  |  |  |
| 63 | 1.1.4.1.1 | Revisión de Entregables del Proyecto | 0.5d | 2015-11-18 | 2015-11-18 |  |  |  | 0.38d |  |  |  |  |  |
| 64 | 1.1.4.1.2 | Elaboración del Acta de Aceptación y Cierre del Proyecto | 0.5d | 2015-11-18 | 2015-11-18 |  |  |  | 0.38d |  |  |  |  |  |
| 65 | 1.1.4.1.3 | Traspaso de Información | 1d? | 2015-11-18 | 2015-11-18 |  |  |  | -0.12d | 0d |  |  |  |  |
| 66 | 1.1.4.2 | **Relatorio de Proyecto** | 1d | 2015-11-19 | 2015-11-19 |  |  |  |  |  |  |  |  |  |
| 67 | 1.1.4.2.1 | Elaborar Relatorio de Proyecto | 1d | 2015-11-19 | 2015-11-19 |  |  |  | -0.12d | 0d |  |  |  |  |
| 68 | 1.1.4.2.2 | Revisión y ajustes de Relatorio por el equipo del Proyecto | 0.5d | 2015-11-19 | 2015-11-19 |  |  |  | -0.12d | 0d | start no earlier than 2015-11-19 |  |  |  |
| 69 | 1.1.4.2.3 | Revisión de Relatorio | 0.5d | 2015-11-19 | 2015-11-19 | 68 |  |  | -0.12d | 0d |  |  |  |  |
| 70 | 1.1.4.2.4 | Traspaso de Información | 1d? | 2015-11-19 | 2015-11-19 |  |  |  | -0.12d | 0d |  |  |  |  |
| 71 | 1.2 | **Proceso de Ingeniería** | 48d | 2016-05-02 | 2016-06-25 |  | 48d | 2015-09-14 |  |  |  | BENITES; PONCE; SINCHE | 5743h | 3016h |
| 72 | 1.2.1 | **Software UTP-GPS-ALARM** | 48d | 2015-09-22 | 2015-11-17 |  | 48d | 2015-09-14 |  |  |  | BENITES; PONCE; SINCHE | 4591h | 3016h |
| 73 | 1.2.1.1 | **Requerimientos** | 13.12d | 2015-09-22 A | 2015-10-06 |  | 13.12d |  |  |  |  | BENITES; PONCE; SINCHE | 363h | 315h |
| 74 | 1.2.1.1.1 | Desarrollar Plan de Proyecto | 1d | 2015-09-22 | 2015-09-22 |  |  |  | 12d |  |  | BENITES; PONCE; SINCHE | 24h |  |
| 75 | 1.2.1.1.2 | Elaborar Matriz de Trazabilidad de Requerimientos | 1d | 2015-09-22 | 2015-09-22 |  |  |  | 12d |  |  | SINCHE | 8h |  |
| 76 | 1.2.1.1.3 | Elaborar Lista Maestra de Requerimientos | 1d | 2015-10-05 | 2015-10-05 |  |  |  | 262.88d |  | start no earlier than 2015-10-05 | SINCHE | 8h |  |
| 77 | 1.2.1.1.4 | Traspaso de Información | 1d | 2015-09-22 | 2015-09-22 |  |  |  | 12d |  |  | BENITES | 8h |  |
| 78 | 1.2.1.2 | **Análisis** | 6.12d | 2015-10-07 | 2015-10-14 |  | 6.12d | 2015-09-14 |  |  |  | BENITES; PONCE; SINCHE | 475h | 347h |
| 79 | 1.2.1.2.1 | Revisión de Matriz de Trazabilidad de Requerimientos | 1d | 2015-09-14 | 2015-09-14 |  |  |  | 280.88d |  | start no earlier than 2015-09-14 | BENITES; SINCHE | 16h |  |
| 80 | 1.2.1.2.2 | Elaborar Documento de Análisis | 2d | 2015-09-29 | 2015-10-01 |  |  |  | 266d |  | finish no earlier than 2015-10-01 | BENITES; SINCHE | 32h |  |

| ID | WBS | Task | Type | Duration | Start | Finish | Predecessors | Remaining | Actual start | Total slack | Constraint | Resources | Work | Actual work |
| --- | --- | --- | --- | --- | --- | --- | --- | --- | --- | --- | --- | --- | --- | --- |
| 81 | 1.2.1.2.3 | **Casos de Uso** |  | 2.12d | 2015-10-12 A | 2015-10-13 |  | 2.12d |  |  |  | BENITES; PONCE; SINCHE | 264h | 200h |
| 82 | 1.2.1.2.3.1 | **Caso de Uso Modulo 1** |  | 2d | 2015-10-12 A | 2015-10-13 |  | 2d |  |  |  | BENITES; PONCE; SINCHE | 72h | 48h |
| 83 | 1.2.1.2.3.1.1 | Entender la problemática actual |  | 1d | 2015-10-12 | 2015-10-12 |  |  |  | 0.88d |  | SINCHE | 8h |  |
| 84 | 1.2.1.2.3.1.2 | Elaborar Casos de Uso |  | 1d | 2015-10-12 | 2015-10-12 |  |  |  | 0.88d |  | SINCHE | 8h |  |
| 85 | 1.2.1.2.3.1.3 | Actualizar Glosario de Términos |  | 1d | 2015-10-12 | 2015-10-12 |  |  |  | 0.88d |  | SINCHE | 8h |  |
| 86 | 1.2.1.2.3.2 | **Caso de Uso Modulo 2** |  | 2.12d | 2015-10-12 A | 2015-10-13 |  | 2.12d |  |  |  | BENITES; PONCE; SINCHE | 74h | 50h |
| 87 | 1.2.1.2.3.2.1 | Entender la problemática actual |  | 1d | 2015-10-12 | 2015-10-12 |  |  |  | 1d |  | SINCHE | 8h |  |
| 88 | 1.2.1.2.3.2.2 | Elaborar Casos de Uso |  | 1d | 2015-10-12 | 2015-10-12 |  |  |  | 1d |  | SINCHE | 8h |  |
| 89 | 1.2.1.2.3.2.3 | Actualizar Glosario de Términos |  | 1d | 2015-10-12 | 2015-10-12 |  |  |  | 1d |  | SINCHE | 8h |  |
| 90 | 1.2.1.2.3.3 | **Caso de Uso Modulo 3** |  | 2.12d | 2015-10-12 A | 2015-10-13 |  | 2.12d |  |  |  | BENITES; PONCE; SINCHE | 67h | 51h |
| 91 | 1.2.1.2.3.3.1 | Entender la problemática actual |  | 0.5d | 2015-10-12 | 2015-10-12 |  |  |  | 1.5d |  | SINCHE | 4h |  |
| 92 | 1.2.1.2.3.3.2 | Elaborar Casos de Uso |  | 0.5d | 2015-09-19 | 2015-09-19 |  |  |  | 276.38d | start no earlier than 2015-09-19 | SINCHE | 4h |  |
| 93 | 1.2.1.2.3.3.3 | Actualizar Glosario de Términos |  | 1d | 2015-10-12 | 2015-10-12 |  |  |  | 1d |  | SINCHE | 8h |  |
| 94 | 1.2.1.2.4 | Actualizar Matriz de Trazabilidad de Requerimientos |  | 1d | 2015-10-14 | 2015-10-14 |  |  |  | 255.88d | start no earlier than 2015-10-14 | SINCHE | 8h |  |
| 95 | 1.2.1.2.5 | Traspaso de Información |  | 1d | 2015-10-14 | 2015-10-14 |  |  |  | 255.88d | start no earlier than 2015-10-14 | BENITES | 8h |  |
| 96 | 1.2.1.3 | **Diseño** |  | 3d | 2015-10-15 | 2015-10-17 |  | 3d | 2015-10-14 |  |  | BENITES; PONCE; SINCHE | 112h | 72h |
| 97 | 1.2.1.3.1 | Elaborar Documento de Diseño | manual | 3d | 2015-10-15 | 2015-10-17 |  |  |  |  |  | PONCE | 24h |  |
| 98 | 1.2.1.3.2 | Actualizar Matriz de Trazabilidad de Requerimientos |  | 1d | 2015-10-15 | 2015-10-15 |  |  |  | 254.88d | start no earlier than 2015-10-15 | SINCHE | 8h |  |
| 99 | 1.2.1.3.3 | Traspaso de Información |  | 1d | 2015-10-14 | 2015-10-15 |  |  |  | 255d | finish no earlier than 2015-10-15 | BENITES | 8h |  |
| 100 | 1.2.1.4 | **Construcción** |  | 13.12d | 2015-10-24 A | 2015-11-07 |  | 13.12d |  |  |  | BENITES; PONCE; SINCHE | 1833h | 858h |
| 101 | 1.2.1.4.1 | **Modulo Configura tu Alarma** |  | 6.12d | 2015-10-24 A | 2015-10-30 |  | 6.12d |  |  |  | BENITES; SINCHE | 396h | 196h |
| 102 | 1.2.1.4.1.1 | **Construcción de Modulo** |  | 6.12d | 2015-10-24 A | 2015-10-30 |  | 6.12d |  |  |  | BENITES; SINCHE | 298h | 98h |
| 103 | 1.2.1.4.1.1.1 | Enlace del Módulo con el servicio de Google Maps |  | 1d | 2015-10-24 | 2015-10-24 |  |  |  | 0d |  | BENITES; PONCE; SINCHE | 24h |  |
| 104 | 1.2.1.4.1.1.2 | Centrado de Mapa en Posición Actual |  | 1d | 2015-10-26 | 2015-10-26 | 103 |  |  | 0d |  | SINCHE; BENITES; PONCE | 24h |  |
| 105 | 1.2.1.4.1.1.3 | Vista por Satélite del mapa e Información de Tráfico |  | 1d | 2015-10-27 | 2015-10-27 | 104 |  |  | 0d |  | BENITES; PONCE; SINCHE | 24h |  |
| 106 | 1.2.1.4.1.1.4 | Rango de Alarma en el Mapa |  | 1d | 2015-10-28 | 2015-10-28 | 105 |  |  | 0d |  | BENITES; PONCE; SINCHE | 24h |  |
| 107 | 1.2.1.4.1.1.5 | Soporte de Archivos MP3 para las Alarmas |  | 1d | 2015-10-29 | 2015-10-29 | 106 |  |  | 0d |  | BENITES; PONCE; SINCHE | 24h |  |
| 108 | 1.2.1.4.1.1.6 | Activar función de Vibración del Teléfono para Alarmas |  | 1d | 2015-10-30 | 2015-10-30 | 107 |  |  | 0d |  | BENITES; PONCE; SINCHE | 24h |  |
| 109 | 1.2.1.4.1.1.7 | Establecer control de Volumen |  | 1d | 2015-10-30 | 2015-10-30 |  |  |  | 241.88d | start no earlier than 2015-10-30 | BENITES; PONCE; SINCHE | 24h |  |
| 110 | 1.2.1.4.1.1.8 | Establecer tipo de Alarma |  | 1d | 2015-10-30 | 2015-10-30 |  |  |  | 241.88d | start no earlier than 2015-10-30 | BENITES; PONCE; SINCHE | 24h |  |
| 111 | 1.2.1.4.1.1.9 | Traspaso de Información |  | 1d | 2015-10-30 | 2015-10-30 |  |  |  | 241.88d | start no earlier than 2015-10-30 | BENITES | 8h |  |

| ID | WBS | Task | Duration | Start | Finish | Predecessors | Remaining | Total slack | Free slack | Constraint | Resources | Work | Actual work |
| --- | --- | --- | --- | --- | --- | --- | --- | --- | --- | --- | --- | --- | --- |
| 112 | 1.2.1.4.2 | **Modulo de Ajustes de la Configuración** | 3.12d | 2015-10-31 A | 2015-11-03 |  | 3.12d |  |  |  | BENITES | 177h | 97h |
| 113 | 1.2.1.4.2.1 | **Construcción de Modulo** | 3d | 2015-10-31 A | 2015-11-03 |  | 3d |  |  |  | BENITES; PONCE; SINCHE | 152h | 72h |
| 114 | 1.2.1.4.2.1.1 | Acceso a Panel de Configuración | 1d | 2015-10-31 | 2015-10-31 |  |  | -0.12d | 0d |  | BENITES; PONCE; SINCHE | 24h |  |
| 115 | 1.2.1.4.2.1.2 | Soporte de Idiomas Inglés y Español | 1d | 2015-11-02 | 2015-11-02 | 114 |  | -0.12d | 0d |  | BENITES; PONCE; SINCHE | 24h |  |
| 116 | 1.2.1.4.2.1.3 | Migración de Datos de Rutas Personalizadas | 1d | 2015-11-03 | 2015-11-03 | 115 |  | -0.12d | 0d |  | BENITES; PONCE; SINCHE | 24h |  |
| 117 | 1.2.1.4.2.1.4 | Traspaso de Información | 1d | 2015-11-03 | 2015-11-03 |  |  | 238.88d |  | start no earlier than 2015-11-03 | BENITES | 8h |  |
| 118 | 1.2.1.4.3 | **Modulo Lista de Alarmas** | 2.12d | 2015-11-04 A | 2015-11-05 |  | 2.12d |  |  |  | BENITES; SINCHE | 66h | 34h |
| 119 | 1.2.1.4.3.1 | **Construcción de Modulo** | 2d? | 2015-11-04 | 2015-11-05 |  |  | 0d |  |  | SINCHE | 32h |  |
| 120 | 1.2.1.4.3.1.1 | Administración de Múltiples registros de Alarmas | 1d | 2015-11-04 | 2015-11-04 |  |  | 0d |  |  | SINCHE | 8h |  |
| 121 | 1.2.1.4.3.1.2 | Historial de Alarmas | 1d | 2015-11-05 | 2015-11-05 | 120 |  | 0d |  |  | SINCHE | 8h |  |
| 122 | 1.2.1.4.3.1.3 | Traspaso de Información | 1d? | 2015-11-05 | 2015-11-05 |  |  | 0d |  | start no earlier than 2015-11-05 |  |  |  |
| 123 | 1.2.1.4.4 | **Seguridad** | 9d | 2015-10-26 A | 2015-11-04 |  | 9d |  |  |  | BENITES; PONCE; SINCHE | 855h | 216h |
| 124 | 1.2.1.4.4.1 | Control de la Piratería de la Aplicación | 8.88d | 2015-10-26 | 2015-11-04 |  |  | 238d |  | finish no earlier than 2015-11-04 | BENITES; PONCE; SINCHE | 213h |  |
| 125 | 1.2.1.4.4.2 | Ahorro de Energía | 8.88d | 2015-10-26 | 2015-11-04 |  |  | 238d |  | finish no earlier than 2015-11-04 | BENITES; PONCE; SINCHE | 213h |  |
| 126 | 1.2.1.4.4.3 | Muestreo de Licencia | 8.88d | 2015-10-26 | 2015-11-04 |  |  | 238d |  | finish no earlier than 2015-11-04 | BENITES; PONCE; SINCHE | 213h |  |
| 127 | 1.2.1.4.5 | Actualizar Matriz de Trazabilidad de Requerimientos | 2d | 2015-11-06 | 2015-11-07 |  |  | 234.88d |  | start no earlier than 2015-11-06 | SINCHE | 16h |  |
| 128 | 1.2.1.4.6 | Traspaso de Información | 1d | 2015-11-07 | 2015-11-07 |  |  | 234.88d |  | start no earlier than 2015-11-07 | BENITES | 8h |  |
| 129 | 1.2.1.5 | **Pruebas** | 6d | 2015-11-09 A | 2015-11-14 |  | 6d |  |  |  | PONCE | 432h | 152h |
| 130 | 1.2.1.5.1 | **Pruebas Internas** | 3d | 2015-11-09 A | 2015-11-11 |  | 3d | 231.88d |  |  | PONCE | 122h | 26h |
| 131 | 1.2.1.5.1.1 | **Modulo Configura tu Alarma** | 1d | 2015-11-09 A | 2015-11-09 |  | 1d |  |  |  | SINCHE | 32h | 8h |
| 132 | 1.2.1.5.1.1.1 | Elaborar Pruebas de Modulo | 1d | 2015-11-09 | 2015-11-09 |  |  | 0d |  |  | SINCHE | 8h |  |
| 133 | 1.2.1.5.1.1.2 | Elaborar Informe de Prueba | 1d | 2015-11-09 | 2015-11-09 |  |  | 233.88d |  | start no earlier than 2015-11-09 | SINCHE | 8h |  |
| 134 | 1.2.1.5.1.1.3 | Traspaso de Información | 1d | 2015-11-09 | 2015-11-09 |  |  | 233.88d |  | start no earlier than 2015-11-09 | BENITES | 8h |  |
| 135 | 1.2.1.5.1.2 | **Modulo de Ajustes de la Configuración** | 1.12d | 2015-11-10 A | 2015-11-10 |  | 1.12d |  |  |  | BENITES | 33h | 9h |
| 136 | 1.2.1.5.1.2.1 | Elaborar Pruebas de Modulo | 1d | 2015-11-10 | 2015-11-10 |  |  | 0d |  |  | BENITES | 8h |  |
| 137 | 1.2.1.5.1.2.2 | Elaborar Informe de Prueba | 1d | 2015-11-10 | 2015-11-10 |  |  | 232.88d |  | start no earlier than 2015-11-10 | BENITES | 8h |  |
| 138 | 1.2.1.5.1.2.3 | Traspaso de Información | 1d | 2015-11-10 | 2015-11-10 |  |  | 232.88d |  | start no earlier than 2015-11-10 | BENITES | 8h |  |

| ID | WBS | Task | Duration | Start | Finish | Predecessors | Remaining | Total slack | Free slack | Constraint | Resources | Work | Actual work |
| --- | --- | --- | --- | --- | --- | --- | --- | --- | --- | --- | --- | --- | --- |
| 139 | 1.2.1.5.1.3 | **Modulo Lista de Alarmas** | 1.12d | 2015-11-11 A | 2015-11-11 |  | 1.12d |  |  |  | PONCE | 33h | 9h |
| 140 | 1.2.1.5.1.3.1 | Elaborar Pruebas de Modulo | 1d | 2015-11-11 | 2015-11-11 |  |  | 0d |  |  | BENITES | 8h |  |
| 141 | 1.2.1.5.1.3.2 | Elaborar Informe de Prueba | 1d | 2015-11-11 | 2015-11-11 |  |  | 0d |  |  | BENITES | 8h |  |
| 142 | 1.2.1.5.1.3.3 | Traspaso de Información | 1d | 2015-11-11 | 2015-11-11 |  |  | 0d |  |  | BENITES | 8h |  |
| 143 | 1.2.1.5.2 | **Pruebas Externas** | 2.12d | 2015-11-12 A | 2015-11-13 |  | 2.12d |  |  |  | BENITES; PONCE; SINCHE | 246h | 78h |
| 144 | 1.2.1.5.2.1 | **Módulo Configura tu Alarma** | 1d | 2015-11-12 | 2015-11-12 |  |  | 1d |  |  | BENITES; PONCE; SINCHE | 64h |  |
| 145 | 1.2.1.5.2.1.1 | Elaborar Pruebas de Modulo | 1d | 2015-11-12 | 2015-11-12 |  |  | 1d |  |  | BENITES; PONCE; SINCHE | 24h |  |
| 146 | 1.2.1.5.2.1.2 | Elaborar Informe de Prueba | 1d | 2015-11-12 | 2015-11-12 |  |  | 1d |  |  | SINCHE | 8h |  |
| 147 | 1.2.1.5.2.1.3 | Traspaso de Información | 1d | 2015-11-12 | 2015-11-12 |  |  | 1d |  |  | BENITES | 8h |  |
| 148 | 1.2.1.5.2.2 | **Módulo de Ajustes de la Configuración** | 1d | 2015-11-12 | 2015-11-12 |  |  | 1d |  |  | BENITES; PONCE; SINCHE | 64h |  |
| 149 | 1.2.1.5.2.2.1 | Elaborar Pruebas de Modulo | 1d | 2015-11-12 | 2015-11-12 |  |  | 1d |  |  | BENITES; PONCE; SINCHE | 24h |  |
| 150 | 1.2.1.5.2.2.2 | Elaborar Informe de Prueba | 1d | 2015-11-12 | 2015-11-12 |  |  | 1d |  |  | SINCHE | 8h |  |
| 151 | 1.2.1.5.2.2.3 | Traspaso de Información | 1d | 2015-11-12 | 2015-11-12 |  |  | 1d |  |  | BENITES | 8h |  |
| 152 | 1.2.1.5.2.3 | **Módulo Lista de Alarmas** | 1.12d | 2015-11-13 A | 2015-11-13 |  | 1.12d |  |  |  | BENITES; PONCE; SINCHE | 67h | 27h |
| 153 | 1.2.1.5.2.3.1 | Elaborar Pruebas de Modulo | 1d? | 2015-11-13 | 2015-11-13 |  |  | 0d |  |  | BENITES; PONCE; SINCHE | 24h |  |
| 154 | 1.2.1.5.2.3.2 | Elaborar Informe de Prueba | 1d? | 2015-11-13 | 2015-11-13 |  |  | 0d |  |  | SINCHE | 8h |  |
| 155 | 1.2.1.5.2.3.3 | Traspaso de Información | 1d? | 2015-11-13 | 2015-11-13 |  |  | 0d |  |  | BENITES | 8h |  |
| 156 | 1.2.1.5.3 | Elaborar Matriz de Trazabilidad de Requerimientos Final | 1d | 2015-11-14 | 2015-11-14 |  |  | 228.88d |  | start no earlier than 2015-11-14 | SINCHE | 8h |  |
| 157 | 1.2.1.5.4 | Traspaso de Información | 1d | 2015-11-14 | 2015-11-14 |  |  | 228.88d |  | start no earlier than 2015-11-14 | BENITES | 8h |  |
| 158 | 1.2.1.6 | **Implementación** | 2d | 2015-11-16 A | 2015-11-17 |  | 2d |  |  |  | BENITES; SINCHE; PONCE | 224h | 120h |
| 159 | 1.2.1.6.1 | **Guía de Usuario** | 2d | 2015-11-16 A | 2015-11-17 |  | 2d |  |  |  | BENITES; SINCHE; PONCE | 104h | 48h |
| 160 | 1.2.1.6.1.1 | Elaborar Guía de Instalación de APK | 1d | 2015-11-16 | 2015-11-16 |  |  | 227.88d |  | start no earlier than 2015-11-16 | BENITES; PONCE; SINCHE | 24h |  |
| 161 | 1.2.1.6.1.2 | Elaborar Manual de Usuario con todos los módulos actualizados | 1d | 2015-11-16 | 2015-11-16 |  |  | -0.12d | 0d | start no earlier than 2015-11-16 | SINCHE; BENITES; PONCE | 24h |  |
| 162 | 1.2.1.6.1.3 | Traspaso de Información | 1d | 2015-11-17 | 2015-11-17 | 161 |  | -0.12d | 0d |  | BENITES | 8h |  |

| ID | WBS | Task | Duration | Start | Finish | Predecessors | Remaining | Actual start | Total slack | Free slack | Constraint | Resources | Work | Actual work |
| --- | --- | --- | --- | --- | --- | --- | --- | --- | --- | --- | --- | --- | --- | --- |
| 163 | 1.2.1.6.2 | **Preparación de APK** | 1d | 2015-11-17 A | 2015-11-17 |  | 1d |  |  |  |  | BENITES; SINCHE; PONCE | 72h | 24h |
| 164 | 1.2.1.6.2.1 | Creación del archivo APK de instalación | 1d | 2015-11-17 | 2015-11-17 |  |  |  | 226.88d |  | start no earlier than 2015-11-17 | BENITES; SINCHE; PONCE | 24h |  |
| 165 | 1.2.1.6.2.2 | Publicación de la Aplicación en Plataforma Google Play | 1d | 2015-11-17 | 2015-11-17 |  |  |  | 226.88d |  | start no earlier than 2015-11-17 | BENITES; SINCHE; PONCE | 24h |  |
| 166 | 1.3 | **Inducción de personal** | 6.12d | 2016-05-02 A | 2016-05-07 |  | 6.12d |  |  |  |  | BENITES; SINCHE | 178h |  |
| 167 | 1.3.1 | Establecer personal para inducción | 1d | 2015-10-19 | 2015-10-19 |  |  |  | 169d | 167d | start no earlier than 2015-10-19 | SINCHE | 8h |  |
| 168 | 1.3.2 | Realizar inducción al personal | 3d | 2016-05-02 | 2016-05-04 | 167 |  |  | 2d | 0d |  | SINCHE | 24h |  |
| 169 | 1.3.3 | Verificar proceso de inducción | 1d | 2015-10-23 | 2015-10-23 |  |  |  | 247.88d |  | start no earlier than 2015-10-23 | BENITES; SINCHE | 16h |  |
| 170 | 1.3.4 | Elaborar Certificado de Inducción de Personal | 1d | 2016-05-05 | 2016-05-05 | 168 |  |  | 2d |  |  | BENITES; SINCHE | 16h |  |
| 171 | 1.3.5 | Traspaso de Información | 1d | 2015-10-23 | 2015-10-23 |  |  |  | 168d | 163d | start no earlier than 2015-10-23 | BENITES | 8h |  |
| 172 | 1.3.6 | Pasar a área de Desarrollo a Personal Capacitado | 1d | 2016-05-02 | 2016-05-02 | 171 |  |  | 5d |  |  | SINCHE | 8h |  |
| 173 | 1.4 | **Proceso de Aseguramiento de la Calidad del Proyecto** | 54.12d | 2016-05-02 | 2016-07-02 |  | 54.12d | 2015-09-14 |  |  |  |  | 1289h | 630h |
| 174 | 1.4.1 | **Primera Revisión** | 13.12d | 2015-09-15 A | 2015-09-29 |  | 13.12d |  |  |  |  | BENITES; PONCE | 426h | 210h |
| 175 | 1.4.1.1 | Elaborar Herramienta de Gestion de Aseguramiento de la Calidad | 13d | 2015-09-14 | 2015-09-29 |  |  |  | 268d |  | finish no earlier than 2015-09-29 | PONCE | 104h |  |
| 176 | 1.4.1.2 | Elaborar CheckList de Aseguramiento de la Calidad | 13d | 2015-09-14 | 2015-09-29 |  |  |  | 268d |  | finish no earlier than 2015-09-29 | PONCE | 104h |  |
| 177 | 1.4.1.3 | Traspaso de Información | 1d | 2015-09-15 | 2015-09-15 |  |  |  | 12d |  |  | BENITES | 8h |  |
| 178 | 1.4.2 | **Segunda Revisión** | 13.12d | 2015-10-13 A | 2015-10-27 |  | 13.12d |  |  |  |  | BENITES; PONCE | 425h | 210h |
| 179 | 1.4.2.1 | Elaborar Herramienta de Gestion de Aseguramiento de la Calidad | 13d | 2015-10-12 | 2015-10-27 |  |  |  | 245d |  | finish no earlier than 2015-10-27 | PONCE | 104h |  |
| 180 | 1.4.2.2 | Actualizar CheckList de Aseguramiento de la Calidad | 13d | 2015-10-12 | 2015-10-27 |  |  |  | -0.75d | 0d | finish no earlier than 2015-10-27 | PONCE | 104h |  |
| 181 | 1.4.2.3 | Traspaso de Información | 0.88d | 2015-10-27 | 2015-10-28 | 180 |  |  | -0.75d | 0d |  | BENITES | 7h |  |
| 182 | 1.4.3 | **Tercera Revisión** | 13.12d | 2015-11-02 A | 2015-11-16 |  | 13.12d |  |  |  |  | BENITES; PONCE | 422h | 210h |
| 183 | 1.4.3.1 | Elaborar Herramienta de Gestion de Aseguramiento de la Calidad | 13d | 2015-10-31 | 2015-11-16 |  |  |  | 228d |  | finish no earlier than 2015-11-16 | PONCE | 104h |  |
| 184 | 1.4.3.2 | Actualizar CheckList de Aseguramiento de la Calidad | 13d | 2015-10-31 | 2015-11-16 |  |  |  | 228d |  | finish no earlier than 2015-11-16 | PONCE | 104h |  |
| 185 | 1.4.3.3 | Traspaso de Información | 0.5d | 2015-11-16 | 2015-11-16 |  |  |  | 228d |  | finish no earlier than 2015-11-16 | BENITES | 4h |  |
| 186 | 1.4.4 | Elaborar Matriz de Seguimiento del Proyecto | 1d | 2015-11-16 | 2015-11-17 |  |  |  | 227d |  | finish no earlier than 2015-11-17 |  |  |  |
| 187 | 1.4.5 | Elaborar Informe de Revisión General del QA | 1d | 2015-09-17 | 2015-09-17 |  |  |  | 277.88d |  | start no earlier than 2015-09-17 | PONCE | 8h |  |
| 188 | 1.4.6 | Traspaso de Información | 1d | 2015-09-17 | 2015-09-17 |  |  |  | 277.88d |  | start no earlier than 2015-09-17 | BENITES | 8h |  |

| ID | WBS | Task | Duration | Start | Finish | Remaining | Total slack | Free slack | Constraint | Resources | Work | Actual work |
| --- | --- | --- | --- | --- | --- | --- | --- | --- | --- | --- | --- | --- |
| 189 | 1.5 | **Reuniones Internas SISREV** | 54.12d | 2016-05-02 A | 2016-07-02 | 54.12d |  |  |  | BENITES; PONCE; SINCHE | 1371h | 24h |
| 190 | 1.5.1 | **Reunión Quincenal 1** | 1d | 2016-05-14 A | 2016-05-14 | 1d |  |  |  | BENITES; PONCE; SINCHE | 72h | 24h |
| 191 | 1.5.1.1 | Elaborar Acta de Reunión | 1d | 2016-05-14 | 2016-05-14 |  | -0.12d | 0d |  | BENITES; PONCE; SINCHE | 24h |  |
| 192 | 1.5.1.2 | Traspaso de Información | 1d | 2016-05-14 | 2016-05-14 |  | -0.12d | 0d |  | BENITES; PONCE; SINCHE | 24h |  |
| 193 | 1.6 | KICKOFF interno | 1d? | 2016-05-23 | 2016-05-23 |  | 65.88d |  | start no earlier than 2016-05-23 | BENITES; PONCE; SINCHE | 24h |  |
| 194 | 1.7 | **Reuniones Externas SISREV - CLIENTE** | 48d | 2016-05-02 A | 2016-06-25 | 48d |  |  |  | BENITES; PONCE; SINCHE; SAENZ | 1664h | 32h |
| 195 | 1.7.1 | **Primera Presentación del Proyecto** | 1d | 2016-05-23 A | 2016-05-23 | 1d |  |  |  | BENITES; PONCE; SINCHE; SAENZ | 128h | 32h |
| 196 | 1.7.1.1 | Reunión Externa con MST EIRL | 1d | 2016-05-23 | 2016-05-23 |  | -0.12d | 0d |  | BENITES; PONCE; SAENZ; SINCHE | 32h |  |
| 197 | 1.7.1.2 | Acta de Reunión con acuerdos tomados | 1d | 2016-05-23 | 2016-05-23 |  | -0.12d | 0d |  | BENITES; PONCE; SAENZ; SINCHE | 32h |  |
| 198 | 1.7.1.3 | Traspaso de Información | 1d | 2016-05-23 | 2016-05-23 |  | -0.12d | 0d |  | BENITES; PONCE; SAENZ; SINCHE | 32h |  |
